# Obra Itu - Baias Fazenda Santa Mônica

How a schedule from MS Project changed from version to version. A marks actual dates.

## Version 1 (saved 2026-07-07, file CRONOGRAMA 06.07.mpp)

Note of the change: feat(cronograma): atualiza cronograma da Baia (06.07) + caixa de RDO

| ID | WBS | Task | Duration | Start | Finish | Predecessors | Complete | Total float | Constraint |
| --- | --- | --- | --- | --- | --- | --- | --- | --- | --- |
| 1 | 1 | **Mobilização** | 18d | 2026-06-08 A | 2026-07-01 |  | 71% | 71d |  |
| 2 |  | Estudo de Solo SPT | 1d | 2026-06-11 A | 2026-06-11 A |  | 100% |  |  |
| 3 |  | Execução de projetos LSF, Telhado, Piso, Baldrame, Fundação para Pilares de Madeira | 9d | 2026-06-08 A | 2026-06-18 A |  | 100% |  |  |
| 4 |  | Mobilização Equipe | 1d | 2026-06-29 | 2026-06-29 |  |  | 73d | start no earlier than 2026-06-29 |
| 5 |  | Fazenda: Nivelamento dos Platôs | 3d | 2026-06-29 | 2026-07-01 |  |  |  |  |
| 6 | 2 | **Marcação de Obra** | 1d | 2026-06-30 A | 2026-06-30 A |  | 100% |  |  |
| 7 |  | Execução de Gabarito | 1d | 2026-06-30 A | 2026-06-30 A |  | 100% |  | start no earlier than 2026-06-30 |
| 8 | 3 | **Baias** | 70d | 2026-06-29 A | 2026-10-02 |  | 3% | 4d |  |
| 9 | 3.1 | **Galpão B** | 58d | 2026-06-29 A | 2026-09-16 |  | 3% | 16d |  |
| 10 | 3.1.1 | **Fundação** | 23d | 2026-06-30 A | 2026-07-30 |  | 17% | 50d |  |
| 11 |  | Escavação De Fundação Para Baldrames | 3d | 2026-07-01 A | 2026-07-03 A | 6 | 100% |  |  |
| 12 |  | Escavação Das Brocas | 2d | 2026-07-03 A | 2026-07-06 A | 11FF+1d | 100% |  |  |
| 13 |  | Escavação Para Instalação Da Hidraulica | 1d | 2026-07-07 | 2026-07-07 | 12 |  | 67d | start no earlier than 2026-07-07 |
| 14 |  | Execução de Ferragens Para Fundação | 10d | 2026-06-30 A | 2026-07-13 |  | 20% | 63d | start no earlier than 2026-06-30 |
| 15 |  | Concretagem das Brocas | 1d | 2026-07-08 | 2026-07-08 | 12FF+2d |  | 0d |  |
| 16 |  | Aplicação Concreto Magro nas Vigas Baldrames | 1d | 2026-07-08 | 2026-07-08 | 15FF |  | 0d |  |
| 17 |  | Locação das Chapas Base com Topógrafo | 3d | 2026-07-09 | 2026-07-13 | 16 |  | 0d |  |
| 18 |  | Execução de Concretagem Vigas e Travamento das Chapas Base - 1ª Etapa | 1d | 2026-07-14 | 2026-07-14 | 17 |  | 0d | start no earlier than 2026-07-10 |
| 19 |  | Fazenda: Escavação das Valas de Drenagem e Preenchimento 1ª Camada de Material Drenante | 4d | 2026-07-15 | 2026-07-20 | 18 |  | 0d |  |
| 20 |  | AJR - Maquinário: Execução De Nivelamento Das Calçadas, Escavação Das Sapatas E Perfuração Dos Troncos | 2d | 2026-07-17 | 2026-07-20 | 19FF |  | 58d |  |
| 21 |  | Execução Ferragem Calçada, Travamento Chapas Base | 4d | 2026-07-16 | 2026-07-21 | 19FF+1d |  | 0d |  |
| 22 |  | Passagem Conduítes Calçada | 1d | 2026-07-21 | 2026-07-21 | 21FF |  | 57d |  |
| 23 |  | Execução de Concretagem das Calçadas e Sapatas Pilares Tronco | 1d | 2026-07-22 | 2026-07-22 | 21 |  | 0d |  |
| 24 |  | Içamento dos Pilares de Madeira | 1d | 2026-07-22 | 2026-07-22 | 21 |  | 50d |  |
| 25 |  | Execução de Acabamento da Calçada (À ser definido) | 1d | 2026-07-22 | 2026-07-22 | 23FF |  |  |  |
| 26 |  | Execução Bloco de Alvenaria em volto das Toras | 3d | 2026-07-23 | 2026-07-27 | 24 |  | 50d |  |
| 27 |  | Assentamento Pedra Moledo | 3d | 2026-07-28 | 2026-07-30 | 26 |  | 50d |  |
| 28 | 3.1.2 | **Cobertura** | 45d | 2026-06-29 | 2026-08-28 |  |  | 0d |  |
| 29 |  | Fabricação de Aço Para Telhado | 28d | 2026-06-29 | 2026-08-05 |  |  | 0d | finish no earlier than 2026-08-05 |
| 30 |  | Marcação dos Pilares com Topógrafo | 2d | 2026-07-21 | 2026-07-22 | 23 |  |  |  |
| 31 |  | Execução de Estrutura Metálica para Telhado | 10d | 2026-08-06 | 2026-08-19 | 29 |  | 0d |  |
| 32 |  | Execução Telhado Shingle | 12d | 2026-08-11 | 2026-08-26 | 31SS+3d |  | 29d |  |
| 33 |  | Pintura Estrutura do Telhado | 8d | 2026-08-18 | 2026-08-27 | 32SS+5d |  | 29d |  |
| 34 |  | Fazenda: Preenchimento 2ª Camada Material Drenante | 3d | 2026-08-26 | 2026-08-28 | 33SS+6d |  | 29d |  |
| 35 | 3.1.3 | **Execução Estrutura Em LSF para Baias** | 27d | 2026-07-13 | 2026-08-18 |  |  | 0d |  |
| 36 |  | Painelização de LSF | 8d | 2026-07-13 | 2026-07-22 |  |  |  |  |
| 37 |  | Verticalização de LSF | 4d | 2026-08-13 | 2026-08-18 | 31SS+5d |  | 16d | finish no earlier than 2026-08-07 |
| 38 | 3.1.4 | **Montagem Infra Elétrica e Hidráulica** | 5d | 2026-08-19 | 2026-08-25 |  |  | 0d |  |
| 39 |  | Instalação Infra Hidráulica | 5d | 2026-08-19 | 2026-08-25 | 37 |  |  |  |
| 40 |  | Instalação Infra Elétrica | 5d | 2026-08-19 | 2026-08-25 | 37 |  |  |  |
| 41 | 3.1.5 | **Plaqueamento** | 16d | 2026-08-26 | 2026-09-16 |  |  | 16d |  |
| 42 |  | Plaqueamento Madeira Externa | 8d | 2026-08-26 | 2026-09-04 | 39 |  | 19d |  |
| 43 |  | Plaqueamento Cimenticia Interno | 8d | 2026-08-26 | 2026-09-04 | 39 |  | 16d |  |
| 44 |  | Aplicação Basecoat | 10d | 2026-09-02 | 2026-09-15 | 43SS+5d |  | 17d |  |
| 45 |  | Pintura com Stain das Madeiras Pinus | 8d | 2026-09-02 | 2026-09-11 | 42SS+5d |  | 19d |  |
| 46 |  | Aplicação de Resina Sobre Pedra Moledo | 8d | 2026-09-07 | 2026-09-16 | 43 |  | 16d |  |
| 47 | 3.1.6 | **Elétrica** | 10d | 2026-08-26 | 2026-09-08 |  |  | 22d |  |
| 48 |  | Execução 1 Ponto de Iluminação por Baia | 5d | 2026-08-26 | 2026-09-01 | 40 |  | 22d |  |
| 49 |  | Execução 1 Ponto de Elétrica em Cada Pilar | 5d | 2026-09-02 | 2026-09-08 | 48 |  | 22d |  |
| 50 | 3.1.7 | **Execução Portão das Baias** | 50d | 2026-06-29 | 2026-09-04 |  |  | 24d |  |
| 51 |  | Produção dos Portões | 20d | 2026-06-29 | 2026-07-24 |  |  | 54d | start no earlier than 2026-06-29 |
| 52 |  | Instalação dos Portões | 12d | 2026-08-20 | 2026-09-04 | 31 |  | 24d |  |
| 53 | 3.2 | **Galpão A** | 70d | 2026-06-29 A | 2026-10-02 |  | 3% | 0d |  |
| 54 | 3.2.1 | **Fundação** | 38d | 2026-06-30 A | 2026-08-20 |  | 18% | 31d |  |
| 55 |  | Escavação De Fundação Para Baldrames | 3d | 2026-07-01 A | 2026-07-03 A |  | 100% |  |  |
| 56 |  | Escavação Das Brocas | 2d | 2026-07-03 A | 2026-07-06 A | 55FF+1d | 100% |  |  |
| 57 |  | Escavação Para Instalação Da Hidraulica | 1d | 2026-07-07 | 2026-07-07 | 56 |  | 63d | start no earlier than 2026-07-07 |
| 58 |  | Execução de Ferragens para Brocas | 2d | 2026-07-06 | 2026-07-07 |  |  | 63d | start no earlier than 2026-07-06 |
| 59 |  | Execução de Ferragens Para Fundação | 6d | 2026-06-30 A | 2026-07-28 | 23 | 33% | 23d | start no earlier than 2026-06-30 |
| 60 |  | Concretagem das Brocas | 1d | 2026-07-08 | 2026-07-08 | 15FF |  | 62d |  |
| 61 |  | Aplicação Concreto Magro nas Vigas Baldrames | 1d | 2026-07-08 | 2026-07-08 | 60FF |  | 62d |  |
| 62 |  | Locação das Chapas Base com Topógrafo | 3d | 2026-07-29 | 2026-07-31 | 59 |  | 23d |  |
| 63 |  | Execução de Concretagem Vigas e Travamento das Chapas Base - 1ª Etapa | 1d | 2026-08-04 | 2026-08-04 | 62FF+2d |  | 23d | start no earlier than 2026-07-10 |
| 64 |  | Fazenda: Escavação das Valas de Drenagem e Preenchimento 1ª Camada de Material Drenante | 4d | 2026-08-05 | 2026-08-10 | 63 |  | 23d |  |
| 65 |  | Ajr - Maquinário: Execução De Nivelamento Das Calçadas, Escavação Das Sapatas E Perfuração Dos Troncos | 2d | 2026-08-07 | 2026-08-10 | 64FF |  | 39d |  |
| 66 |  | Execução Ferragem Calçada, Travamento Chapas Base | 4d | 2026-08-06 | 2026-08-11 | 64FF+1d |  | 23d |  |
| 67 |  | Passagem Conduítes Calçada | 1d | 2026-08-11 | 2026-08-11 | 66FF |  | 38d |  |
| 68 |  | Execução de Concretagem das Calçadas e Sapatas Pilares Tronco | 1d | 2026-08-12 | 2026-08-12 | 66 |  | 35d |  |
| 69 |  | Içamento dos Pilares de Madeira | 1d | 2026-08-12 | 2026-08-12 | 66 |  | 23d |  |
| 70 |  | Execução de Acabamento da Calçada (À ser definido) | 1d | 2026-07-22 | 2026-07-22 | 68FF |  |  |  |

| ID | WBS | Task | Duration | Start | Finish | Predecessors | Total float | Constraint |
| --- | --- | --- | --- | --- | --- | --- | --- | --- |
| 71 |  | Execução Bloco de Alvenaria em volto das Toras | 3d | 2026-08-13 | 2026-08-17 | 69 | 23d |  |
| 72 |  | Assentamento Pedra Moledo | 3d | 2026-08-18 | 2026-08-20 | 71 | 23d |  |
| 73 | 3.2.2 | **Cobertura** | 55d | 2026-06-29 | 2026-09-11 |  | 15d |  |
| 74 |  | Fabricação de Aço Para Telhado | 28d | 2026-06-29 | 2026-08-05 |  | 42d | finish no earlier than 2026-08-05 |
| 75 |  | Marcação dos Pilares com Topógrafo | 2d | 2026-07-21 | 2026-07-22 | 68 |  |  |
| 76 |  | Execução de Estrutura Metálica para Telhado | 10d | 2026-08-20 | 2026-09-02 | 31 | 0d |  |
| 77 |  | Execução Telhado Shingle | 12d | 2026-08-25 | 2026-09-09 | 76SS+3d | 15d |  |
| 78 |  | Pintura Estrutura do Telhado | 8d | 2026-09-01 | 2026-09-10 | 77SS+5d | 15d |  |
| 79 |  | Fazenda: Preenchimento 2ª Camada Material Drenante | 3d | 2026-09-09 | 2026-09-11 | 78SS+6d | 15d |  |
| 80 | 3.2.3 | **Execução Estrutura Em LSF para Baias** | 42d | 2026-07-13 | 2026-09-08 |  | 0d |  |
| 81 |  | Painelização de LSF | 8d | 2026-07-13 | 2026-07-22 |  |  |  |
| 82 |  | Verticalização de LSF | 4d | 2026-09-03 | 2026-09-08 | 76 | 0d | finish no earlier than 2026-08-07 |
| 83 | 3.2.4 | **Montagem Infra Elétrica e Hidráulica** | 5d | 2026-09-09 | 2026-09-15 |  | 0d |  |
| 84 |  | Instalação Infra Hidráulica | 5d | 2026-09-09 | 2026-09-15 | 82 |  |  |
| 85 |  | Instalação Infra Elétrica | 5d | 2026-09-09 | 2026-09-15 | 82 |  |  |
| 86 | 3.2.5 | **Plaqueamento** | 31d | 2026-08-21 | 2026-10-02 |  | 0d |  |
| 87 |  | Plaqueamento Madeira Externa | 8d | 2026-09-16 | 2026-09-25 | 85 | 0d |  |
| 88 |  | Plaqueamento Cimenticia Interno | 8d | 2026-09-16 | 2026-09-25 | 85 | 0d |  |
| 89 |  | Aplicação Basecoat | 8d | 2026-09-23 | 2026-10-02 | 88SS+5d | 0d |  |
| 90 |  | Pintura com Stain das Madeiras Pinus | 8d | 2026-09-23 | 2026-10-02 | 87SS+5d | 0d |  |
| 91 |  | Aplicação de Resina Sobre Pedra Moledo | 8d | 2026-08-21 | 2026-09-01 | 72 | 23d |  |
| 92 | 3.2.6 | **Elétrica** | 10d | 2026-09-16 | 2026-09-29 |  | 3d |  |
| 93 |  | Execução 1 Ponto de Iluminação por Baia | 5d | 2026-09-16 | 2026-09-22 | 85 | 3d |  |
| 94 |  | Execução 1 Ponto de Elétrica em Cada Pilar | 5d | 2026-09-23 | 2026-09-29 | 93 | 3d |  |
| 95 | 3.2.7 | **Execução Portão das Baias** | 60d | 2026-06-29 | 2026-09-18 |  | 10d |  |
| 96 |  | Produção dos Portões | 20d | 2026-06-29 | 2026-07-24 |  | 50d | start no earlier than 2026-06-29 |
| 97 |  | Instalação dos Portões | 12d | 2026-09-03 | 2026-09-18 | 76 | 10d |  |
| 98 | 4 | **Desmobilização** | 4d | 2026-10-05 | 2026-10-08 |  | 0d |  |
| 99 |  | Limpeza Geral | 2d | 2026-10-05 | 2026-10-06 | 53 | 0d |  |
| 100 |  | Desmobilização | 2d | 2026-10-07 | 2026-10-08 | 99 | 0d |  |

## Version 2 (saved 2026-07-14, file CRONOGRAMA 16.07.mpp)

Note of the change: docs(plano): paridade MSPDI validada contra export real do MS Project

Last finish stays 2026-10-08. Complete tasks 7 → 12.

Added:

| ID | Task | Duration | Start | Finish | Predecessors |
| --- | --- | --- | --- | --- | --- |
| 17 | Entrega das Chapas Base | 1d | 2026-07-17 | 2026-07-17 |  |
| 63 | Entrega das Chapas Base | 1d | 2026-07-24 | 2026-07-24 | 17FF+5d |

Changed:

| ID | Task | Start | Finish | Duration | Complete | Total float | Predecessors | Other |
| --- | --- | --- | --- | --- | --- | --- | --- | --- |
| 1 | **Mobilização** |  | 2026-07-01 A |  | 71% → 100% | 71d → none |  |  |
| 4 | Mobilização Equipe | 2026-06-29 A | 2026-06-29 A |  | 0% → 100% | 73d → none |  |  |
| 5 | Fazenda: Nivelamento dos Platôs | 2026-06-29 A | 2026-07-01 A |  | 0% → 100% |  |  |  |
| 8 | **Baias** | 2026-06-29 A → 2026-06-30 A (+1d) |  | 70d → 69d | 3% → 6% |  |  |  |
| 9 | **Galpão B** | 2026-06-29 A → 2026-06-30 A (+1d) |  | 58d → 57d | 3% → 7% |  |  |  |
| 10 | **Fundação** |  | 2026-07-30 → 2026-08-07 (+8d) | 23d → 29d | 17% → 32% | 50d → 44d |  |  |
| 13 | Escavação Para Instalação Da Hidraulica | 2026-07-07 → 2026-07-15 (+8d) | 2026-07-07 → 2026-07-16 (+9d) | 1d → 2d |  | 67d → none | 12 → none | constraint start no earlier than 2026-07-07 → start no earlier than 2026-07-15 |
| 14 | Execução de Ferragens Para Fundação |  |  |  | 20% → 70% | 63d → 51d |  |  |
| 15 | Concretagem das Brocas | 2026-07-08 A | 2026-07-08 A |  | 0% → 100% | 0d → none |  |  |
| 16 | Aplicação Concreto Magro nas Vigas Baldrames | 2026-07-08 A |  |  | 0% → 70% | 0d → 66d |  |  |
| 18 | Locação das Chapas Base | 2026-07-09 → 2026-07-20 (+11d) | 2026-07-13 → 2026-07-21 (+8d) | 3d → 2d |  | 0d → 44d | 16 → 17 | was named Locação das Chapas Base com Topógrafo |
| 19 | Execução de Concretagem Vigas e Travamento das Chapas Base - 1ª Etapa | 2026-07-14 → 2026-07-22 (+8d) | 2026-07-14 → 2026-07-22 (+8d) |  |  | 0d → 44d |  |  |
| 20 | Fazenda: Escavação das Valas de Drenagem e Preenchimento 1ª Camada de Material Drenante | 2026-07-15 → 2026-07-23 (+8d) | 2026-07-20 → 2026-07-28 (+8d) |  |  | 0d → 44d |  |  |
| 21 | AJR - Maquinário: Execução De Nivelamento Das Calçadas, Escavação Das Sapatas E Perfuração Dos Troncos | 2026-07-17 → 2026-07-27 (+10d) | 2026-07-20 → 2026-07-28 (+8d) |  |  | 58d → 52d |  |  |
| 22 | Execução Ferragem Calçada, Travamento Chapas Base | 2026-07-16 → 2026-07-24 (+8d) | 2026-07-21 → 2026-07-29 (+8d) |  |  | 0d → 44d |  |  |
| 23 | Passagem Conduítes Calçada | 2026-07-21 → 2026-07-29 (+8d) | 2026-07-21 → 2026-07-29 (+8d) |  |  | 57d → 51d |  |  |
| 24 | Execução de Concretagem das Calçadas e Sapatas Pilares Tronco | 2026-07-22 → 2026-07-30 (+8d) | 2026-07-22 → 2026-07-30 (+8d) |  |  | 0d → 48d |  |  |
| 25 | Içamento dos Pilares de Madeira | 2026-07-22 → 2026-07-30 (+8d) | 2026-07-22 → 2026-07-30 (+8d) |  |  | 50d → 44d |  |  |
| 26 | Execução de Acabamento da Calçada | 2026-07-22 → 2026-07-30 (+8d) | 2026-07-22 → 2026-07-30 (+8d) |  |  | none → 50d |  | was named Execução de Acabamento da Calçada (À ser definido) |
| 27 | Execução Bloco de Alvenaria em volto das Toras | 2026-07-23 → 2026-07-31 (+8d) | 2026-07-27 → 2026-08-04 (+8d) |  |  | 50d → 44d |  |  |
| 28 | Assentamento Pedra Moledo | 2026-07-28 → 2026-08-05 (+8d) | 2026-07-30 → 2026-08-07 (+8d) |  |  | 50d → 44d |  |  |
| 29 | **Cobertura** | 2026-06-29 → 2026-07-16 (+17d) |  | 45d → 32d |  |  |  |  |
| 30 | Fabricação de Aço Para Telhado | 2026-06-29 → 2026-07-16 (+17d) |  | 28d → 15d |  |  |  |  |
| 36 | **Execução Estrutura Em LSF para Baias** | 2026-07-13 → 2026-07-27 (+14d) |  | 27d → 17d |  |  |  |  |
| 37 | Painelização de LSF | 2026-07-13 → 2026-07-27 (+14d) | 2026-07-22 → 2026-08-05 (+14d) |  |  |  |  |  |
| 51 | **Execução Portão das Baias** | 2026-06-29 → 2026-07-27 (+28d) |  | 50d → 30d |  |  |  |  |
| 52 | Produção dos Portões | 2026-06-29 → 2026-07-27 (+28d) | 2026-07-24 → 2026-08-21 (+28d) |  |  | 54d → 34d |  | constraint start no earlier than 2026-06-29 → start no earlier than 2026-07-27 |
| 54 | **Galpão A** | 2026-06-29 A → 2026-07-01 A (+2d) |  | 70d → 68d | 3% → 4% |  |  |  |
| 55 | **Fundação** | 2026-06-30 A → 2026-07-01 A (+1d) | 2026-08-20 → 2026-08-17 (-3d) | 38d → 34d | 18% → 20% | 31d → 34d |  |  |
| 58 | Escavação Para Instalação Da Hidraulica | 2026-07-07 → 2026-07-17 (+10d) | 2026-07-07 → 2026-07-20 (+13d) | 1d → 2d |  | 63d → 54d | 57 → 13 | constraint start no earlier than 2026-07-07 → start no earlier than 2026-07-15 |
| 59 | Execução de Ferragens para Brocas | 2026-07-06 A | 2026-07-07 A |  | 0% → 100% | 63d → none |  |  |
| 60 | Execução de Ferragens Para Fundação | 2026-06-30 A → 2026-07-14 (+14d) | 2026-07-28 → 2026-07-23 (-5d) | 6d → 8d | 33% → 0% | 23d → 51d | 24 → 14 | constraint start no earlier than 2026-06-30 → none; resources Veks → none |
| 61 | Concretagem das Brocas | 2026-07-08 A | 2026-07-08 A |  | 0% → 100% | 62d → none |  |  |
| 62 | Aplicação Concreto Magro nas Vigas Baldrames | 2026-07-08 A |  |  | 0% → 70% |  |  |  |
| 64 | Locação das Chapas Base | 2026-07-29 → 2026-07-27 (-2d) | 2026-07-31 → 2026-07-28 (-3d) | 3d → 2d |  | 23d → 26d | 60 → 63 | was named Locação das Chapas Base com Topógrafo |
| 65 | Execução de Concretagem Vigas e Travamento das Chapas Base - 1ª Etapa | 2026-08-04 → 2026-07-30 (-5d) | 2026-08-04 → 2026-07-30 (-5d) |  |  | 23d → 26d |  |  |
| 66 | Fazenda: Escavação das Valas de Drenagem e Preenchimento 1ª Camada de Material Drenante | 2026-08-05 → 2026-07-31 (-5d) | 2026-08-10 → 2026-08-05 (-5d) |  |  | 23d → 26d |  |  |
| 67 | Ajr - Maquinário: Execução De Nivelamento Das Calçadas, Escavação Das Sapatas E Perfuração Dos Troncos | 2026-08-07 → 2026-08-04 (-3d) | 2026-08-10 → 2026-08-05 (-5d) |  |  | 39d → 42d |  |  |
| 68 | Execução Ferragem Calçada, Travamento Chapas Base | 2026-08-06 → 2026-08-03 (-3d) | 2026-08-11 → 2026-08-06 (-5d) |  |  | 23d → 26d |  |  |
| 69 | Passagem Conduítes Calçada | 2026-08-11 → 2026-08-06 (-5d) | 2026-08-11 → 2026-08-06 (-5d) |  |  | 38d → 41d |  |  |
| 70 | Execução de Concretagem das Calçadas e Sapatas Pilares Tronco | 2026-08-12 → 2026-08-07 (-5d) | 2026-08-12 → 2026-08-07 (-5d) |  |  | 35d → 38d |  |  |
| 71 | Içamento dos Pilares de Madeira | 2026-08-12 → 2026-08-07 (-5d) | 2026-08-12 → 2026-08-07 (-5d) |  |  | 23d → 26d |  |  |
| 72 | Execução de Acabamento da Calçada | 2026-07-22 → 2026-08-07 (+16d) | 2026-07-22 → 2026-08-07 (+16d) |  |  | none → 40d |  | was named Execução de Acabamento da Calçada (À ser definido) |
| 73 | Execução Bloco de Alvenaria em volto das Toras | 2026-08-13 → 2026-08-10 (-3d) | 2026-08-17 → 2026-08-12 (-5d) |  |  | 23d → 26d |  |  |
| 74 | Assentamento Pedra Moledo | 2026-08-18 → 2026-08-13 (-5d) | 2026-08-20 → 2026-08-17 (-3d) |  |  | 23d → 26d |  |  |
| 75 | **Cobertura** | 2026-06-29 → 2026-07-16 (+17d) |  | 55d → 42d |  | 15d → 3d |  |  |
| 76 | Fabricação de Aço Para Telhado | 2026-06-29 → 2026-07-16 (+17d) |  | 28d → 15d |  |  |  |  |
| 82 | **Execução Estrutura Em LSF para Baias** | 2026-07-13 → 2026-07-27 (+14d) |  | 42d → 32d |  |  |  |  |
| 83 | Painelização de LSF | 2026-07-13 → 2026-07-27 (+14d) | 2026-07-22 → 2026-08-05 (+14d) |  |  |  |  |  |
| 88 | **Plaqueamento** | 2026-08-21 → 2026-08-18 (-3d) |  | 31d → 34d |  |  |  |  |
| 93 | Aplicação de Resina Sobre Pedra Moledo | 2026-08-21 → 2026-08-18 (-3d) | 2026-09-01 → 2026-08-27 (-5d) |  |  | 23d → 26d |  |  |
| 97 | **Execução Portão das Baias** | 2026-06-29 → 2026-08-03 (+35d) |  | 60d → 35d |  | 10d → 0d |  |  |
| 98 | Produção dos Portões | 2026-06-29 → 2026-08-03 (+35d) | 2026-07-24 → 2026-08-28 (+35d) |  |  | 50d → none |  | constraint start no earlier than 2026-06-29 → start no earlier than 2026-08-03 |

## Version 3 (saved 2026-08-10, file CRONOGRAMA BAIAS 10.08.mpp)

Note of the change: feat(cronograma): a revisao estrutural entra pelo CRONOGRAMA BAIAS 10.08.mpp

Last finish 2026-10-08 → 2026-10-19 (+11d). Complete tasks 12 → 29.

Added:

| ID | Task | Duration | Start | Finish | Predecessors | Constraint | Resources |
| --- | --- | --- | --- | --- | --- | --- | --- |
| 19 | Revisão do Projeto Fundação e LSF - Execução de Cocho em Alvenaria | 3d | 2026-07-28 A | 2026-07-30 A |  |  |  |
| 20 | Fase de Orçamento e Fornecimento de aço para nova fundação | 3d | 2026-07-31 A | 2026-08-04 A | 19 |  |  |
| 21 | Execução de Caixaria, Ferragem das Calçadas, posicionamento da armação nas valas e locação das chapas base | 15d | 2026-07-20 A | 2026-08-07 A |  |  |  |
| 22 | Escavação de novas valas e brocas das vigas transversais | 2d | 2026-08-05 A | 2026-08-06 A | 19FS+3d |  |  |
| 23 | Execução de armação de ferragem da nova fundação, caixaria e posicionamento da armação nas valas | 4d | 2026-08-05 A | 2026-08-10 A | 20 |  |  |
| 25 | Aplicação Concreto Magro nas novas vigas e concretagem das brocas novas | 1d | 2026-08-12 | 2026-08-12 | 24 | start no earlier than 2026-08-12 |  |
| 27 | Execução de Caixaria e Posicionamento da Armação das Vigas Transversais | 4d | 2026-08-11 | 2026-08-14 | 23 |  |  |
| 35 | Execução de Pilares Metálicos | 7d | 2026-08-18 | 2026-08-26 | 28 |  | Veks |
| 36 | Fabricação de Aço para Telhados | 7d | 2026-08-17 | 2026-08-25 | 28FS-1d |  |  |
| 68 | AJR - Maquinário: Execução De Nivelamento e Compactação Das Calçadas | 1d | 2026-07-24 A | 2026-07-24 A | 18 |  |  |
| 69 | Escavação de novas valas e brocas das vigas transversais | 2d | 2026-08-07 A | 2026-08-10 A | 22 |  |  |
| 70 | Execução de armação de ferragem da nova fundação | 5d | 2026-08-04 A | 2026-08-10 A | 23FF |  |  |
| 71 | Aplicação Concreto Magro nas novas vigas e concretagem das brocas novas | 1d | 2026-08-12 | 2026-08-12 | 25FF |  |  |
| 73 | Execução de Caixaria, Ferragem das Calçadas, posicionamento da armação nas valas e locação das chapas base | 5d | 2026-08-17 | 2026-08-21 | 72 |  |  |
| 75 | Execução de Concretagem Vigas, Calçadas e Sapatas | 1d | 2026-08-24 | 2026-08-24 | 73 |  |  |
| 82 | Execução de Pilares Metálicos | 7d | 2026-08-25 | 2026-09-02 | 75 |  |  |
| 83 | Fabricação de Aço para Telhados | 7d | 2026-08-25 | 2026-09-02 | 75 |  | Veks |

Removed: 18 Locação das Chapas Base; 22 Execução Ferragem Calçada, Travamento Chapas Base; 24 Execução de Concretagem das Calçadas e Sapatas Pilares Tronco; 31 Marcação dos Pilares com Topógrafo; 59 Execução de Ferragens para Brocas; 64 Locação das Chapas Base; 65 Execução de Concretagem Vigas e Travamento das Chapas Base - 1ª Etapa; 67 Ajr - Maquinário: Execução De Nivelamento Das Calçadas, Escavação Das Sapatas E Perfuração Dos Troncos; 68 Execução Ferragem Calçada, Travamento Chapas Base; 70 Execução de Concretagem das Calçadas e Sapatas Pilares Tronco; 77 Marcação dos Pilares com Topógrafo

Changed:

| ID | Task | Start | Finish | Duration | Complete | Total float | Predecessors | Other |
| --- | --- | --- | --- | --- | --- | --- | --- | --- |
| 8 | **Baias** |  | 2026-10-02 → 2026-10-15 (+13d) | 69d → 78d | 6% → 22% | 4d → 2d |  |  |
| 9 | **Galpão B** |  | 2026-09-16 → 2026-10-15 (+29d) | 57d → 78d | 7% → 30% | 16d → 2d |  |  |
| 10 | **Fundação** |  | 2026-08-07 → 2026-09-01 (+25d) | 29d → 46d | 32% → 75% | 44d → 34d |  |  |
| 13 | Execução de Ferragens Para Fundação |  | 2026-07-13 A |  | 70% → 100% | 51d → none |  |  |
| 15 | Aplicação Concreto Magro nas Vigas Baldrames |  | 2026-07-08 A |  | 70% → 100% | 66d → none |  |  |
| 16 | Escavação Para Instalação Da Hidraulica | 2026-07-15 A | 2026-07-16 → 2026-07-15 A (-1d) | 2d → 1d | 0% → 100% |  |  |  |
| 17 | Entrega das Chapas Base | 2026-07-17 A | 2026-07-17 A |  | 0% → 100% |  |  |  |
| 18 | AJR - Maquinário: Execução De Nivelamento e Compactação das Calçadas | 2026-07-27 → 2026-07-21 A (-6d) | 2026-07-28 → 2026-07-23 A (-5d) | 2d → 3d | 0% → 100% | 52d → none | 24FF → none | was named AJR - Maquinário: Execução De Nivelamento Das Calçadas, Escavação Das Sapatas E Perfuração Dos Troncos |
| 24 | Fazenda: Escavação das Valas de Drenagem e Preenchimento 1ª Camada de Material Drenante | 2026-07-23 → 2026-08-08 A (+16d) | 2026-07-28 → 2026-08-11 (+14d) | 4d → 3d | 0% → 50% | 44d → none | 28 → none |  |
| 26 | Passagem Conduítes Calçada | 2026-07-29 → 2026-08-14 (+16d) | 2026-07-29 → 2026-08-14 (+16d) |  |  | 51d → 41d | Execução Ferragem Calçada, Travamento Chapas BaseFF → 27FF |  |
| 28 | Execução de Concretagem Vigas e Calçadas | 2026-07-22 → 2026-08-17 (+26d) | 2026-07-22 → 2026-08-17 (+26d) |  |  | 44d → 12d | Locação das Chapas Base → 27 | was named Execução de Concretagem Vigas e Travamento das Chapas Base - 1ª Etapa |
| 29 | Execução de Acabamento da Calçada | 2026-07-30 → 2026-08-17 (+18d) | 2026-07-30 → 2026-08-17 (+18d) |  |  | 50d → 24d | Execução de Concretagem das Calçadas e Sapatas Pilares TroncoFF → 28FF |  |
| 30 | Içamento dos Pilares de Madeira | 2026-07-30 → 2026-08-17 (+18d) | 2026-07-30 → 2026-08-17 (+18d) |  |  | 44d → 40d | Execução Ferragem Calçada, Travamento Chapas Base → 28FF |  |
| 31 | Execução Bloco de Alvenaria em volto das Toras | 2026-07-31 → 2026-08-25 (+25d) | 2026-08-04 → 2026-08-27 (+23d) |  |  | 44d → 28d | 30 → 75 |  |
| 32 | Assentamento Pedra Moledo | 2026-08-05 → 2026-08-28 (+23d) | 2026-08-07 → 2026-09-01 (+25d) |  |  | 44d → 28d |  |  |
| 33 | **Cobertura** | 2026-07-16 → 2026-07-14 A (-2d) | 2026-08-28 → 2026-09-18 (+21d) | 32d → 49d | 0% → 28% | 0d → 21d |  |  |
| 34 | Fabricação de Aço para Pilares | 2026-07-16 → 2026-07-14 A (-2d) | 2026-08-05 A | 15d → 17d | 0% → 100% | 0d → none |  | was named Fabricação de Aço Para Telhado |
| 37 | Execução de Estrutura Metálica para Telhado | 2026-08-06 → 2026-08-26 (+20d) | 2026-08-19 → 2026-09-03 (+15d) | 10d → 7d |  | 0d → 21d | 34 → 36 | resources Veks → none |
| 38 | Execução Telhado Shingle | 2026-08-11 → 2026-09-01 (+21d) | 2026-08-26 → 2026-09-16 (+21d) |  |  | 29d → 21d | 37SS+3d → 37SS+4d |  |
| 39 | Pintura Estrutura do Telhado | 2026-08-18 → 2026-09-08 (+21d) | 2026-08-27 → 2026-09-17 (+21d) |  |  | 29d → 21d |  |  |
| 40 | Fazenda: Preenchimento 2ª Camada Material Drenante | 2026-08-26 → 2026-09-16 (+21d) | 2026-08-28 → 2026-09-18 (+21d) |  |  | 29d → 21d |  |  |
| 41 | **Execução Estrutura Em LSF para Baias** | 2026-07-27 → 2026-08-11 (+15d) | 2026-08-18 → 2026-09-02 (+15d) |  |  |  |  |  |
| 42 | Painelização de LSF | 2026-07-27 → 2026-08-11 (+15d) | 2026-08-05 → 2026-08-17 (+12d) | 8d → 5d |  |  |  |  |
| 43 | Verticalização de LSF | 2026-08-13 → 2026-08-24 (+11d) | 2026-08-18 → 2026-09-02 (+15d) | 4d → 8d |  | 16d → 20d | 37SS+5d → 35SS+4d |  |
| 44 | **Montagem Infra Elétrica e Hidráulica** | 2026-08-19 → 2026-08-27 (+8d) | 2026-08-25 → 2026-09-02 (+8d) |  |  | 0d → 20d |  |  |
| 45 | Instalação Infra Hidráulica | 2026-08-19 → 2026-08-27 (+8d) | 2026-08-25 → 2026-09-02 (+8d) |  |  | none → 20d | 43 → 43SS+3d |  |
| 46 | Instalação Infra Elétrica | 2026-08-19 → 2026-08-27 (+8d) | 2026-08-25 → 2026-09-02 (+8d) |  |  | none → 19d | 43 → 35 |  |
| 47 | **Plaqueamento** | 2026-08-26 → 2026-09-03 (+8d) | 2026-09-16 → 2026-10-15 (+29d) | 16d → 31d |  | 16d → 2d |  |  |
| 48 | Plaqueamento Madeira Externa | 2026-08-26 → 2026-09-03 (+8d) | 2026-09-04 → 2026-09-16 (+12d) | 8d → 10d |  | 19d → 20d | 45 → 43 |  |
| 49 | Plaqueamento Cimenticia Interno | 2026-08-26 → 2026-09-03 (+8d) | 2026-09-04 → 2026-09-14 (+10d) |  |  | 16d → 20d |  |  |
| 50 | Aplicação Basecoat | 2026-09-02 → 2026-09-10 (+8d) | 2026-09-15 → 2026-09-21 (+6d) | 10d → 8d |  | 17d → 20d |  |  |
| 51 | Pintura com Stain das Madeiras Pinus | 2026-09-02 → 2026-09-10 (+8d) | 2026-09-11 → 2026-09-21 (+10d) |  |  | 19d → 20d |  |  |
| 52 | Aplicação de Resina Sobre Pedra Moledo | 2026-09-07 → 2026-10-06 (+29d) | 2026-09-16 → 2026-10-15 (+29d) |  |  | 16d → 2d | 49 → 99FF |  |
| 53 | **Elétrica** | 2026-08-26 → 2026-09-03 (+8d) | 2026-09-08 → 2026-09-16 (+8d) |  |  | 22d → 23d |  |  |
| 54 | Execução 1 Ponto de Iluminação por Baia | 2026-08-26 → 2026-09-03 (+8d) | 2026-09-01 → 2026-09-09 (+8d) |  |  | 22d → 19d |  |  |
| 55 | Execução 1 Ponto de Elétrica em Cada Pilar | 2026-09-02 → 2026-09-10 (+8d) | 2026-09-08 → 2026-09-16 (+8d) |  |  | 22d → 19d |  |  |
| 56 | **Execução Portão das Baias** | 2026-07-27 → 2026-08-17 (+21d) | 2026-09-04 → 2026-09-11 (+7d) | 30d → 20d |  | 24d → 0d |  |  |
| 57 | Produção dos Portões | 2026-07-27 → 2026-08-17 (+21d) | 2026-08-21 → 2026-08-28 (+7d) | 20d → 10d |  | 34d → none |  | constraint start no earlier than 2026-07-27 → start no earlier than 2026-08-17 |
| 58 | Instalação dos Portões | 2026-08-20 → 2026-08-31 (+11d) | 2026-09-04 → 2026-09-11 (+7d) | 12d → 10d |  | 24d → 26d | 37 → 57 |  |
| 59 | **Galpão A** |  | 2026-10-02 → 2026-10-15 (+13d) | 68d → 77d | 4% → 13% | 0d → 2d |  |  |
| 60 | **Fundação** |  | 2026-08-17 → 2026-09-04 (+18d) | 34d → 48d | 20% → 58% | 34d → 29d |  |  |
| 61 | Escavação De Fundação Para Baldrames |  |  |  |  |  |  | resources AJR (Veks) → none |
| 62 | Escavação Das Brocas |  |  |  |  |  | 61FF+1d → none | resources AJR (Veks) → none |
| 63 | Execução de Ferragens Para Fundação | 2026-07-14 → 2026-07-07 A (-7d) | 2026-07-23 → 2026-07-07 A (-16d) | 8d → 1d | 0% → 100% | 51d → none | 13 → none | constraint none → finish no earlier than 2026-07-07 |
| 64 | Concretagem das Brocas | 2026-07-08 A → 2026-07-06 A (-2d) | 2026-07-08 A → 2026-07-07 A (-1d) | 1d → 2d |  |  | 14FF → none | constraint none → finish no earlier than 2026-07-07 |
| 65 | Aplicação Concreto Magro nas Vigas Baldrames | 2026-07-08 A → 2026-07-14 A (+6d) | 2026-07-08 → 2026-07-23 A (+15d) | 1d → 8d | 70% → 100% | 62d → none | 64FF → 13 | constraint none → finish no earlier than 2026-07-23 |
| 66 | Escavação Para Instalação Da Hidraulica | 2026-07-17 → 2026-07-08 A (-9d) | 2026-07-20 → 2026-07-08 A (-12d) | 2d → 1d | 0% → 100% | 54d → none | 16 → 14FF | constraint start no earlier than 2026-07-15 → none; resources Veks → none |
| 67 | Entrega das Chapas Base | 2026-07-24 → 2026-07-31 A (+7d) | 2026-07-24 → 2026-07-31 A (+7d) |  | 0% → 100% | 26d → none | 17FF+5d → none |  |
| 72 | Fazenda: Escavação das Valas de Drenagem e Preenchimento 1ª Camada de Material Drenante | 2026-07-31 → 2026-08-12 (+12d) | 2026-08-05 → 2026-08-14 (+9d) | 4d → 3d |  | 26d → 0d | Execução de Concretagem Vigas e Travamento das Chapas Base - 1ª Etapa → 24 | resources Fazenda → none |
| 74 | Passagem Conduítes Calçada | 2026-08-06 → 2026-08-21 (+15d) | 2026-08-06 → 2026-08-21 (+15d) |  |  |  | Execução Ferragem Calçada, Travamento Chapas BaseFF → 73FF |  |
| 76 | Execução de Acabamento da Calçada | 2026-08-07 → 2026-08-24 (+17d) | 2026-08-07 → 2026-08-24 (+17d) |  |  |  | Execução de Concretagem das Calçadas e Sapatas Pilares TroncoFF → 75FF |  |
| 77 | Içamento dos Pilares de Madeira | 2026-08-07 → 2026-08-24 (+17d) | 2026-08-07 → 2026-08-24 (+17d) |  |  | 26d → 40d | Execução Ferragem Calçada, Travamento Chapas Base → 75FF |  |
| 78 | Execução Bloco de Alvenaria em volto das Toras | 2026-08-10 → 2026-08-28 (+18d) | 2026-08-12 → 2026-09-01 (+20d) |  |  | 26d → 31d | 77 → 31 |  |
| 79 | Assentamento Pedra Moledo | 2026-08-13 → 2026-09-02 (+20d) | 2026-08-17 → 2026-09-04 (+18d) |  |  | 26d → 31d |  |  |
| 80 | **Cobertura** | 2026-07-16 → 2026-07-17 (+1d) | 2026-09-11 → 2026-09-15 (+4d) | 42d → 43d |  | 3d → none |  |  |
| 81 | Fabricação de Aço para Pilares | 2026-07-16 → 2026-07-14 (-2d) |  | 15d → 17d |  | 42d → 53d | none → 34FF | was named Fabricação de Aço Para Telhado |
| 84 | Execução de Estrutura Metálica para Telhado | 2026-08-20 → 2026-09-03 (+14d) | 2026-09-02 → 2026-09-11 (+9d) | 10d → 7d |  | 0d → 24d | 37 → 83 | resources Veks → none |
| 85 | Execução Telhado Shingle | 2026-08-25 → 2026-08-31 (+6d) | 2026-09-09 → 2026-09-15 (+6d) |  |  | 15d → 20d | 84SS+3d → 83SS+4d |  |
| 86 | Pintura Estrutura do Telhado | 2026-09-01 → 2026-09-07 (+6d) | 2026-09-10 → 2026-09-16 (+6d) |  |  | 15d → 20d |  |  |
| 87 | Fazenda: Preenchimento 2ª Camada Material Drenante | 2026-09-09 → 2026-09-15 (+6d) | 2026-09-11 → 2026-09-17 (+6d) |  |  | 15d → 20d |  |  |
| 88 | **Execução Estrutura Em LSF para Baias** | 2026-07-27 → 2026-08-10 (+14d) | 2026-09-08 → 2026-09-09 (+1d) | 32d → 23d |  |  |  |  |
| 89 | Painelização de LSF | 2026-07-27 → 2026-08-10 (+14d) | 2026-08-05 → 2026-08-14 (+9d) | 8d → 5d |  |  | none → 42FF |  |
| 90 | Verticalização de LSF | 2026-09-03 → 2026-08-31 (-3d) | 2026-09-08 → 2026-09-09 (+1d) | 4d → 8d |  |  | 84 → 82SS+4d |  |
| 91 | **Montagem Infra Elétrica e Hidráulica** | 2026-09-09 → 2026-09-10 (+1d) | 2026-09-15 → 2026-09-16 (+1d) |  |  |  |  |  |
| 92 | Instalação Infra Hidráulica | 2026-09-09 → 2026-09-10 (+1d) | 2026-09-15 → 2026-09-16 (+1d) |  |  | none → 21d |  |  |
| 93 | Instalação Infra Elétrica | 2026-09-09 → 2026-09-10 (+1d) | 2026-09-15 → 2026-09-16 (+1d) |  |  | none → 0d |  |  |
| 94 | **Plaqueamento** | 2026-08-18 → 2026-09-17 (+30d) | 2026-10-02 → 2026-10-15 (+13d) | 34d → 21d |  |  |  |  |
| 95 | Plaqueamento Madeira Externa | 2026-09-16 → 2026-09-17 (+1d) | 2026-09-25 → 2026-09-30 (+5d) | 8d → 10d |  |  |  |  |
| 96 | Plaqueamento Cimenticia Interno | 2026-09-16 → 2026-09-17 (+1d) | 2026-09-25 → 2026-09-28 (+3d) |  |  | 0d → 6d |  |  |
| 97 | Aplicação Basecoat | 2026-09-23 → 2026-09-24 (+1d) | 2026-10-02 → 2026-10-07 (+5d) | 8d → 10d |  | 0d → 6d |  |  |

| ID | Task | Start | Finish | Duration | Total float | Predecessors | Other |
| --- | --- | --- | --- | --- | --- | --- | --- |
| 98 | Pintura com Stain das Madeiras Pinus | 2026-09-23 → 2026-09-24 (+1d) | 2026-10-02 → 2026-10-05 (+3d) |  |  |  |  |
| 99 | Aplicação de Resina Sobre Pedra Moledo | 2026-08-18 → 2026-10-06 (+49d) | 2026-08-27 → 2026-10-15 (+49d) |  | 26d → 0d | 79 → 98 |  |
| 100 | **Elétrica** | 2026-09-16 → 2026-09-17 (+1d) | 2026-09-29 → 2026-09-30 (+1d) |  | 3d → 11d |  |  |
| 101 | Execução 1 Ponto de Iluminação por Baia | 2026-09-16 → 2026-09-17 (+1d) | 2026-09-22 → 2026-09-23 (+1d) |  | 3d → 11d |  |  |
| 102 | Execução 1 Ponto de Elétrica em Cada Pilar | 2026-09-23 → 2026-09-24 (+1d) | 2026-09-29 → 2026-09-30 (+1d) |  | 3d → 11d |  |  |
| 103 | **Execução Portão das Baias** | 2026-08-03 → 2026-08-17 (+14d) | 2026-09-18 → 2026-10-14 (+26d) | 35d → 43d | 0d → 1d |  |  |
| 104 | Produção dos Portões | 2026-08-03 → 2026-08-17 (+14d) |  | 20d → 10d | none → 34d | none → 57FF | constraint start no earlier than 2026-08-03 → start no earlier than 2026-07-27 |
| 105 | Instalação dos Portões | 2026-09-03 → 2026-10-01 (+28d) | 2026-09-18 → 2026-10-14 (+26d) | 12d → 10d | 10d → 1d | 84 → 95 |  |
| 106 | **Desmobilização** | 2026-10-05 → 2026-10-16 (+11d) | 2026-10-08 → 2026-10-19 (+11d) | 4d → 2d |  |  |  |
| 107 | Limpeza Geral | 2026-10-05 → 2026-10-16 (+11d) | 2026-10-06 → 2026-10-16 (+10d) | 2d → 1d |  |  |  |
| 108 | Desmobilização | 2026-10-07 → 2026-10-19 (+12d) | 2026-10-08 → 2026-10-19 (+11d) | 2d → 1d |  |  |  |

## Version 4 (saved 2026-08-12, file CRONOGRAMA 12.08.mpp)

Note of the change: merge: main na branch de recebimento e atesto

Last finish 2026-10-19 → 2026-10-20 (+1d). Complete tasks 29 → 31.

Changed:

| ID | Task | Start | Finish | Duration | Complete | Total float | Predecessors | Other |
| --- | --- | --- | --- | --- | --- | --- | --- | --- |
| 8 | **Baias** |  | 2026-10-15 → 2026-10-16 (+1d) | 78d → 79d | 22% → 23% |  |  |  |
| 9 | **Galpão B** |  | 2026-10-15 → 2026-10-16 (+1d) | 78d → 79d | 30% → 31% |  |  |  |
| 10 | **Fundação** |  | 2026-09-01 → 2026-09-02 (+1d) | 46d → 47d |  |  |  |  |
| 23 | Fazenda: Escavação das Valas de Drenagem e Preenchimento 1ª Camada de Material Drenante |  | 2026-08-11 A |  | 50% → 100% |  |  |  |
| 25 | Aplicação Concreto Magro nas novas vigas e concretagem das brocas novas | 2026-08-12 → 2026-08-13 (+1d) | 2026-08-12 → 2026-08-13 (+1d) |  |  | 43d → none | 23 → none | constraint start no earlier than 2026-08-12 → start no earlier than 2026-08-13 |
| 26 | Passagem Conduítes Calçada | 2026-08-14 → 2026-08-18 (+4d) | 2026-08-14 → 2026-08-18 (+4d) |  |  | 41d → 45d |  |  |
| 27 | Execução de Caixaria e Posicionamento da Armação das Vigas Transversais |  | 2026-08-14 → 2026-08-18 (+4d) | 4d → 6d |  |  |  |  |
| 28 | Execução de Concretagem Vigas e Calçadas | 2026-08-17 → 2026-08-19 (+2d) | 2026-08-17 → 2026-08-19 (+2d) |  |  | 12d → 19d |  |  |
| 29 | Execução de Acabamento da Calçada | 2026-08-17 → 2026-08-19 (+2d) | 2026-08-17 → 2026-08-19 (+2d) |  |  | 24d → 44d |  |  |
| 30 | Içamento dos Pilares de Madeira | 2026-08-17 → 2026-08-19 (+2d) | 2026-08-17 → 2026-08-19 (+2d) |  |  | 40d → 44d |  |  |
| 31 | Execução Bloco de Alvenaria em volto das Toras | 2026-08-25 → 2026-08-26 (+1d) | 2026-08-27 → 2026-08-28 (+1d) |  |  | 28d → 29d |  |  |
| 32 | Assentamento Pedra Moledo | 2026-08-28 → 2026-08-31 (+3d) | 2026-09-01 → 2026-09-02 (+1d) |  |  | 28d → 34d |  |  |
| 33 | **Cobertura** |  | 2026-09-18 → 2026-09-22 (+4d) | 49d → 51d |  | 21d → 20d |  |  |
| 35 | Execução de Pilares Metálicos | 2026-08-18 → 2026-08-20 (+2d) | 2026-08-26 → 2026-08-28 (+2d) |  |  | 16d → 19d |  |  |
| 36 | Fabricação de Aço para Telhados | 2026-08-17 → 2026-08-19 (+2d) | 2026-08-25 → 2026-08-27 (+2d) |  |  | 21d → 20d |  |  |
| 37 | Execução de Estrutura Metálica para Telhado | 2026-08-26 → 2026-08-28 (+2d) | 2026-09-03 → 2026-09-07 (+4d) |  |  | 21d → 20d |  |  |
| 38 | Execução Telhado Shingle | 2026-09-01 → 2026-09-03 (+2d) | 2026-09-16 → 2026-09-18 (+2d) |  |  | 21d → 20d |  |  |
| 39 | Pintura Estrutura do Telhado | 2026-09-08 → 2026-09-10 (+2d) | 2026-09-17 → 2026-09-21 (+4d) |  |  | 21d → 20d |  |  |
| 40 | Fazenda: Preenchimento 2ª Camada Material Drenante | 2026-09-16 → 2026-09-18 (+2d) | 2026-09-18 → 2026-09-22 (+4d) |  |  | 21d → 20d |  |  |
| 41 | **Execução Estrutura Em LSF para Baias** |  | 2026-09-02 → 2026-09-04 (+2d) | 17d → 19d |  |  |  |  |
| 43 | Verticalização de LSF | 2026-08-24 → 2026-08-26 (+2d) | 2026-09-02 → 2026-09-04 (+2d) |  |  | 20d → 19d |  |  |
| 44 | **Montagem Infra Elétrica e Hidráulica** | 2026-08-27 → 2026-08-31 (+4d) | 2026-09-02 → 2026-09-04 (+2d) |  |  | 20d → 19d |  |  |
| 45 | Instalação Infra Hidráulica | 2026-08-27 → 2026-08-31 (+4d) | 2026-09-02 → 2026-09-04 (+2d) |  |  | 20d → 19d |  |  |
| 46 | Instalação Infra Elétrica | 2026-08-27 → 2026-08-31 (+4d) | 2026-09-02 → 2026-09-04 (+2d) |  |  | 19d → 22d |  |  |
| 47 | **Plaqueamento** | 2026-09-03 → 2026-09-07 (+4d) | 2026-10-15 → 2026-10-16 (+1d) | 31d → 30d |  |  |  |  |
| 48 | Plaqueamento Madeira Externa | 2026-09-03 → 2026-09-07 (+4d) | 2026-09-16 → 2026-09-18 (+2d) |  |  | 20d → 19d |  |  |
| 49 | Plaqueamento Cimenticia Interno | 2026-09-03 → 2026-09-07 (+4d) | 2026-09-14 → 2026-09-16 (+2d) |  |  | 20d → 19d |  |  |
| 50 | Aplicação Basecoat | 2026-09-10 → 2026-09-14 (+4d) | 2026-09-21 → 2026-09-23 (+2d) |  |  | 20d → 19d |  |  |
| 51 | Pintura com Stain das Madeiras Pinus | 2026-09-10 → 2026-09-14 (+4d) | 2026-09-21 → 2026-09-23 (+2d) |  |  | 20d → 19d |  |  |
| 52 | Aplicação de Resina Sobre Pedra Moledo | 2026-10-06 → 2026-10-07 (+1d) | 2026-10-15 → 2026-10-16 (+1d) |  |  |  |  |  |
| 53 | **Elétrica** | 2026-09-03 → 2026-09-07 (+4d) | 2026-09-16 → 2026-09-18 (+2d) |  |  | 23d → 22d |  |  |
| 54 | Execução 1 Ponto de Iluminação por Baia | 2026-09-03 → 2026-09-07 (+4d) | 2026-09-09 → 2026-09-11 (+2d) |  |  | 19d → 22d |  |  |
| 55 | Execução 1 Ponto de Elétrica em Cada Pilar | 2026-09-10 → 2026-09-14 (+4d) | 2026-09-16 → 2026-09-18 (+2d) |  |  | 19d → 22d |  |  |
| 59 | **Galpão A** |  | 2026-10-15 → 2026-10-16 (+1d) | 77d → 78d | 13% → 14% |  |  |  |
| 60 | **Fundação** |  | 2026-09-04 → 2026-09-07 (+3d) | 48d → 49d | 58% → 63% |  |  |  |
| 71 | Aplicação Concreto Magro nas novas vigas e concretagem das brocas novas | 2026-08-12 → 2026-08-13 (+1d) | 2026-08-12 → 2026-08-13 (+1d) |  |  | 48d → 46d |  |  |
| 72 | Fazenda: Escavação das Valas de Drenagem e Preenchimento 1ª Camada de Material Drenante | 2026-08-12 A | 2026-08-14 A |  | 0% → 100% | 0d → none |  |  |
| 73 | Execução de Caixaria, Ferragem das Calçadas, posicionamento da armação nas valas e locação das chapas base |  | 2026-08-21 → 2026-08-24 (+3d) | 5d → 6d |  |  |  |  |
| 74 | Passagem Conduítes Calçada | 2026-08-21 → 2026-08-24 (+3d) | 2026-08-21 → 2026-08-24 (+3d) |  |  | 41d → 39d |  |  |
| 75 | Execução de Concretagem Vigas, Calçadas e Sapatas | 2026-08-24 → 2026-08-25 (+1d) | 2026-08-24 → 2026-08-25 (+1d) |  |  |  |  |  |
| 76 | Execução de Acabamento da Calçada | 2026-08-24 → 2026-08-25 (+1d) | 2026-08-24 → 2026-08-25 (+1d) |  |  | 40d → 38d |  |  |
| 77 | Içamento dos Pilares de Madeira | 2026-08-24 → 2026-08-25 (+1d) | 2026-08-24 → 2026-08-25 (+1d) |  |  | 40d → 38d |  |  |
| 78 | Execução Bloco de Alvenaria em volto das Toras | 2026-08-28 → 2026-08-31 (+3d) | 2026-09-01 → 2026-09-02 (+1d) |  |  | 31d → 29d |  |  |
| 79 | Assentamento Pedra Moledo | 2026-09-02 → 2026-09-03 (+1d) | 2026-09-04 → 2026-09-07 (+3d) |  |  | 31d → 29d |  |  |
| 82 | Execução de Pilares Metálicos | 2026-08-25 → 2026-08-26 (+1d) | 2026-09-02 → 2026-09-03 (+1d) |  |  |  |  |  |
| 83 | Fabricação de Aço para Telhados | 2026-08-25 → 2026-08-26 (+1d) | 2026-09-02 → 2026-09-03 (+1d) |  |  |  |  |  |
| 84 | Execução de Estrutura Metálica para Telhado | 2026-09-03 → 2026-09-04 (+1d) | 2026-09-11 → 2026-09-14 (+3d) |  |  |  |  |  |
| 85 | Execução Telhado Shingle | 2026-08-31 → 2026-09-01 (+1d) | 2026-09-15 → 2026-09-16 (+1d) |  |  |  |  |  |
| 86 | Pintura Estrutura do Telhado | 2026-09-07 → 2026-09-08 (+1d) | 2026-09-16 → 2026-09-17 (+1d) |  |  |  |  |  |
| 87 | Fazenda: Preenchimento 2ª Camada Material Drenante | 2026-09-15 → 2026-09-16 (+1d) | 2026-09-17 → 2026-09-18 (+1d) |  |  |  |  |  |
| 88 | **Execução Estrutura Em LSF para Baias** |  | 2026-09-09 → 2026-09-10 (+1d) | 23d → 24d |  |  |  |  |
| 90 | Verticalização de LSF | 2026-08-31 → 2026-09-01 (+1d) | 2026-09-09 → 2026-09-10 (+1d) |  |  |  |  |  |
| 91 | **Montagem Infra Elétrica e Hidráulica** | 2026-09-10 → 2026-09-11 (+1d) | 2026-09-16 → 2026-09-17 (+1d) |  |  |  |  |  |
| 92 | Instalação Infra Hidráulica | 2026-09-10 → 2026-09-11 (+1d) | 2026-09-16 → 2026-09-17 (+1d) |  |  |  |  |  |
| 93 | Instalação Infra Elétrica | 2026-09-10 → 2026-09-11 (+1d) | 2026-09-16 → 2026-09-17 (+1d) |  |  |  |  |  |
| 94 | **Plaqueamento** | 2026-09-17 → 2026-09-18 (+1d) | 2026-10-15 → 2026-10-16 (+1d) |  |  |  |  |  |
| 95 | Plaqueamento Madeira Externa | 2026-09-17 → 2026-09-18 (+1d) | 2026-09-30 → 2026-10-01 (+1d) |  |  |  |  |  |
| 96 | Plaqueamento Cimenticia Interno | 2026-09-17 → 2026-09-18 (+1d) | 2026-09-28 → 2026-09-29 (+1d) |  |  |  |  |  |
| 97 | Aplicação Basecoat | 2026-09-24 → 2026-09-25 (+1d) | 2026-10-07 → 2026-10-08 (+1d) |  |  |  |  |  |
| 98 | Pintura com Stain das Madeiras Pinus | 2026-09-24 → 2026-09-25 (+1d) | 2026-10-05 → 2026-10-06 (+1d) |  |  |  |  |  |
| 99 | Aplicação de Resina Sobre Pedra Moledo | 2026-10-06 → 2026-10-07 (+1d) | 2026-10-15 → 2026-10-16 (+1d) |  |  |  |  |  |
| 100 | **Elétrica** | 2026-09-17 → 2026-09-18 (+1d) | 2026-09-30 → 2026-10-01 (+1d) |  |  |  |  |  |
| 101 | Execução 1 Ponto de Iluminação por Baia | 2026-09-17 → 2026-09-18 (+1d) | 2026-09-23 → 2026-09-24 (+1d) |  |  |  |  |  |
| 102 | Execução 1 Ponto de Elétrica em Cada Pilar | 2026-09-24 → 2026-09-25 (+1d) | 2026-09-30 → 2026-10-01 (+1d) |  |  |  |  |  |
| 103 | **Execução Portão das Baias** |  | 2026-10-14 → 2026-10-15 (+1d) | 43d → 44d |  |  |  |  |
| 105 | Instalação dos Portões | 2026-10-01 → 2026-10-02 (+1d) | 2026-10-14 → 2026-10-15 (+1d) |  |  |  |  |  |
| 106 | **Desmobilização** | 2026-10-16 → 2026-10-19 (+3d) | 2026-10-19 → 2026-10-20 (+1d) |  |  |  |  |  |
| 107 | Limpeza Geral | 2026-10-16 → 2026-10-19 (+3d) | 2026-10-16 → 2026-10-19 (+3d) |  |  |  |  |  |
| 108 | Desmobilização | 2026-10-19 → 2026-10-20 (+1d) | 2026-10-19 → 2026-10-20 (+1d) |  |  |  |  |  |
