How a schedule from MS Project changed from version to version. A marks actual dates.

## Version 1 (saved 2026-06-11, file Projeto1.mpp)

Note of the change: a

| ID | WBS | Task | Duration | Start | Finish | Predecessors | Total float |
| --- | --- | --- | --- | --- | --- | --- | --- |
| 1 | 1 | **MOBILIZAÇÃO** | 14d | 2026-06-08 | 2026-06-25 |  | 0d |
| 2 |  | PROPOSTA ENCARREGADO | 1d | 2026-06-10 | 2026-06-10 |  |  |
| 3 |  | ESTUDO DE SOLO SPT | 1d | 2026-06-11 | 2026-06-11 |  |  |
| 4 |  | EXECUÇÃO DE PROJETOS. LSF, TELHADO, PISO, BALDRAME, FUNDAÇÃO PARA PILARES DE MADEIRA | 9d | 2026-06-08 | 2026-06-18 |  |  |
| 5 |  | CHECK LIST DE FERRAMENTES PARA MOBILIZAÇÃO | 3d | 2026-06-10 | 2026-06-12 |  |  |
| 6 |  | CHECK LIST DE ATIVIDADES PARA MOBILIZAÇÃO | 1d | 2026-06-10 | 2026-06-10 |  |  |
| 7 |  | CONTRATAÇÃO DE EQUIPE CIVIL | 5d | 2026-06-11 | 2026-06-17 |  |  |
| 8 |  | CONTRATAÇÃO DE EQUIPE DE SERRALHERIA | 5d | 2026-06-11 | 2026-06-17 |  |  |
| 9 |  | VALIDAÇÃO DO ORÇAMENTO FUNDAÇÃO | 3d | 2026-06-10 | 2026-06-12 |  |  |
| 10 |  | VALIDAÇÃO DO ORÇAMENTO GERAL | 5d | 2026-06-19 | 2026-06-25 | 4 |  |
| 11 |  | ALUGUEL DE CASA / HOTEL | 7d | 2026-06-09 | 2026-06-17 |  |  |
| 12 |  | MOBILIZAÇÃO EQUIPE | 2d | 2026-06-21 | 2026-06-22 |  |  |
| 13 | 2 | **BAIAS** | 124d | 2026-06-08 | 2026-11-26 |  | 0d |
| 14 |  | MARCAÇÃO DE OBRA | 3d | 2026-06-22 | 2026-06-24 |  |  |
| 15 |  | Contratar topografo ? | 1d? | 2026-06-08 | 2026-06-08 |  |  |
| 16 |  | ESCAVAÇÃO DE SAPATAS PARA PILARES | 7d | 2026-06-25 | 2026-07-03 | 14 |  |
| 17 |  | Ferramentas | 1d? | 2026-06-08 | 2026-06-08 |  |  |
| 18 |  | Máquina ? | 1d? | 2026-06-08 | 2026-06-08 |  |  |
| 19 |  | ESCAVAÇÃO DE FUNDAÇÃO PARA BALDRAMES | 7d | 2026-06-25 | 2026-07-03 | 14 |  |
| 20 |  | Maquina para escavar o baldrame | 1d? | 2026-06-08 | 2026-06-08 |  |  |
| 21 |  | EXECUÇÃO DE CAIXARIA PARA PISO DE CONCRETO E VIGAS BALDRAME | 10d | 2026-07-06 | 2026-07-17 | 19 |  |
| 22 |  | EXECUÇÃO DE FERRAGENS PARA FUNDAÇÃO | 10d | 2026-07-06 | 2026-07-17 | 16 |  |
| 23 |  | EXECUÇÃO DE CAIXARIA | 7d | 2026-07-06 | 2026-07-14 | 19 |  |
| 24 |  | EXECUÇÃO DE CONCRETAGEM DAS FUNDAÇÕES | 3d | 2026-07-15 | 2026-07-17 | 23 |  |
| 25 |  | EXECUÇÃO DE CONCRETAGEM DAS CALÇADAS | 3d | 2026-07-20 | 2026-07-22 | 24 |  |
| 26 |  | IÇAMENTO DOS PILARES DE MADEIRA | 3d | 2026-07-20 | 2026-07-22 | 24 |  |
| 27 |  | FABRICAÇÃO DE AÇO PARA TELHADO | 30d | 2026-06-19 | 2026-07-30 | 4 |  |
| 28 |  | EXECUÇÃO DE ESTRUTURA METÁLICA PARA TELHADO | 40d | 2026-07-31 | 2026-09-24 | 27 |  |
| 29 |  | EXECUÇÃO DE ESTRUTURA EM LSF PARA BAIAS | 1d | 2026-06-08 | 2026-06-08 |  |  |
| 30 |  | PAINELIZAÇÃO DE LSF | 8d | 2026-07-20 | 2026-07-29 | 24 |  |
| 31 |  | VERTICALIZAÇÃO DE LSF | 8d | 2026-07-30 | 2026-08-10 | 30 |  |
| 32 |  | CHAPEAMENTO EXTERNO DAS BAIAS | 9d | 2026-08-11 | 2026-08-21 | 31 |  |
| 33 |  | CHAPEAMENTO INTERNO DA BAIAS | 9d | 2026-08-24 | 2026-09-03 | 32 |  |
| 34 |  | EXECUÇÃO DE BASECOAT | 15d | 2026-09-04 | 2026-09-24 | 33 |  |
| 35 |  | PINTURA COM STAIN DAS MADEIRAS PINUS | 10d | 2026-08-24 | 2026-09-04 | 32 |  |
| 36 |  | EXECUÇÃO DE PEDRA MOLEDO | 20d | 2026-07-31 | 2026-08-27 | 27 |  |
| 37 |  | APLICAÇÃO DE RESINA SOBRE PEDRA MODELO | 5d | 2026-08-28 | 2026-09-03 | 36 |  |
| 38 |  | EXECUÇÃO DE 1 PONTO DE ILUMINAÇÃO POR BAIA | 5d | 2026-09-25 | 2026-10-01 | 28 |  |
| 39 |  | EXECUÇÃO DE 1 PONTO DE ELÉTRICA EM CADA PILAR | 5d | 2026-10-02 | 2026-10-08 | 38 |  |
| 40 |  | PINTURA DE ESTRUTURA DO TELHADO | 15d | 2026-11-06 | 2026-11-26 | 42 |  |
| 41 |  | EXECUÇÃO DE PORTÃO DAS BAIAS | 40d | 2026-06-25 | 2026-08-19 | 14 |  |
| 42 |  | EXECUÇÃO DE TELHADO SINGLE | 30d | 2026-09-25 | 2026-11-05 | 28 |  |
| 43 | 2.30 | **ÁREA DE APOIO** | 0d | 2026-06-08 | 2026-06-08 |  | 124d |
| 44 |  | EXECUÇÃO DE PROJETO DE LSF | 1d? | 2026-06-22 | 2026-06-22 |  |  |
| 45 |  | EXECUÇÃO DE PROJETO DE RADIER | 1d? | 2026-06-22 | 2026-06-22 |  |  |
| 46 |  | EXECUÇÃO DE PROJETO HIDRÁULICO E ELETRICO | 1d? | 2026-06-22 | 2026-06-22 |  |  |
| 47 |  | MARCAÇÃO DE OBRA | 1d? | 2026-06-08 | 2026-06-08 |  |  |
| 48 |  | EXECUÇÃO DE CAIXARIA | 1d? | 2026-06-08 | 2026-06-08 |  |  |
| 49 |  | EXECUÇÃO DE PONTOS DE INSTALAÇÕES NA FUNDAÇÃO | 1d? | 2026-06-08 | 2026-06-08 |  |  |
| 50 |  | EXECUÇÃO DE CONCRETAGEM | 1d? | 2026-06-08 | 2026-06-08 |  |  |
| 51 |  | EXECUÇÃO DE PAINELIZAÇÃO DE LSF | 1d? | 2026-06-08 | 2026-06-08 |  |  |
| 52 |  | EXECUÇÃO DE VERTICALIZAÇÃO DO LSF | 1d? | 2026-06-08 | 2026-06-08 |  |  |

## Version 2 (saved 2026-06-22, file CRONOGRAMA 16.06 (1).mpp)

Note of the change: chore(data): versiona fontes da Baia (.mpp do cronograma + Planilha de Custos REV01)

Last finish 2026-11-26 → 2026-09-11 (-76d). Complete tasks 0 → 1.

Added:

| ID | Task | Duration | Start | Finish |
| --- | --- | --- | --- | --- |
| 1 | **OBRA ITU - BAIAS FAZENDA SANTA MÔNICA** | 70d | 2026-06-08 A | 2026-09-11 |
| 17 | **FUNDAÇÃO** | 22d | 2026-06-22 | 2026-07-21 |
| 31 | **PLAQUEMENTO** | 57d | 2026-06-08 | 2026-08-25 |
| 38 | **ELÉTRICA** | 10d | 2026-08-14 | 2026-08-27 |

Removed: 17 Ferramentas; 18 Máquina ?; 20 Maquina para escavar o baldrame; 43 ÁREA DE APOIO; 44 EXECUÇÃO DE PROJETO DE LSF; 45 EXECUÇÃO DE PROJETO DE RADIER; 46 EXECUÇÃO DE PROJETO HIDRÁULICO E ELETRICO; 47 MARCAÇÃO DE OBRA; 48 EXECUÇÃO DE CAIXARIA; 49 EXECUÇÃO DE PONTOS DE INSTALAÇÕES NA FUNDAÇÃO; 50 EXECUÇÃO DE CONCRETAGEM; 51 EXECUÇÃO DE PAINELIZAÇÃO DE LSF; 52 EXECUÇÃO DE VERTICALIZAÇÃO DO LSF

Changed:

| ID | Task | Start | Finish | Duration | Complete | Total float | Predecessors | Other |
| --- | --- | --- | --- | --- | --- | --- | --- | --- |
| 2 | **MOBILIZAÇÃO** | 2026-06-08 A |  |  | 0% → 2% | 0d → 56d |  |  |
| 3 | PROPOSTA ENCARREGADO | 2026-06-10 → 2026-06-08 (-2d) | 2026-06-10 → 2026-06-12 (+2d) | 1d → 5d |  | none → 65d |  |  |
| 4 | ESTUDO DE SOLO SPT | 2026-06-11 A | 2026-06-11 A |  | 0% → 100% |  |  |  |
| 6 | CHECK LIST DE FERRAMENTAS PARA MOBILIZAÇÃO | 2026-06-10 → 2026-06-08 (-2d) |  | 3d → 5d |  | none → 65d |  | was named CHECK LIST DE FERRAMENTES PARA MOBILIZAÇÃO; resources Paulo → Alan |
| 7 | CHECK LIST DE ATIVIDADES PARA MOBILIZAÇÃO | 2026-06-10 → 2026-06-08 (-2d) | 2026-06-10 → 2026-06-12 (+2d) | 1d → 5d |  | none → 65d |  | resources Paulo → Alan |
| 8 | CONTRATAÇÃO DE EQUIPE CIVIL | 2026-06-11 → 2026-06-08 (-3d) | 2026-06-17 → 2026-06-12 (-5d) |  |  | none → 65d |  |  |
| 9 | CONTRATAÇÃO DE EQUIPE DE SERRALHERIA | 2026-06-11 → 2026-06-08 (-3d) | 2026-06-17 → 2026-06-12 (-5d) |  |  | none → 65d |  |  |
| 10 | VALIDAÇÃO DO ORÇAMENTO FUNDAÇÃO | 2026-06-10 → 2026-06-08 (-2d) |  | 3d → 5d |  | none → 65d |  |  |
| 12 | ALUGUEL DE CASA / HOTEL | 2026-06-09 → 2026-06-08 (-1d) | 2026-06-17 → 2026-06-16 (-1d) |  |  | none → 63d |  |  |
| 13 | MOBILIZAÇÃO EQUIPE | 2026-06-21 → 2026-06-08 (-13d) | 2026-06-22 → 2026-06-09 (-13d) |  |  | none → 68d |  |  |
| 14 | **BAIAS** |  | 2026-11-26 → 2026-09-11 (-76d) | 124d → 70d |  |  |  |  |
| 15 | **MARCAÇÃO DE OBRA** |  | 2026-06-24 → 2026-06-22 (-2d) | 3d → 0d |  | none → 15d |  |  |
| 16 | Contratar topografo ? | 2026-06-08 → 2026-06-22 (+14d) | 2026-06-08 → 2026-06-22 (+14d) | 1d? → 0d |  | none → 15d |  | constraint none → start no earlier than 2026-06-22; resources none → Alan |
| 18 | ESCAVAÇÃO DE SAPATAS PARA PILARES | 2026-06-25 → 2026-06-22 (-3d) | 2026-07-03 → 2026-06-30 (-3d) |  |  | none → 48d |  |  |
| 19 | ESCAVAÇÃO DE FUNDAÇÃO PARA BALDRAMES | 2026-06-25 → 2026-06-22 (-3d) | 2026-07-03 → 2026-06-30 (-3d) |  |  | none → 15d |  |  |
| 20 | EXECUÇÃO DE CAIXARIA PARA PISO DE CONCRETO E VIGAS BALDRAME | 2026-07-06 → 2026-07-01 (-5d) | 2026-07-17 → 2026-07-14 (-3d) |  |  | none → 43d |  |  |
| 21 | EXECUÇÃO DE FERRAGENS PARA FUNDAÇÃO | 2026-07-06 → 2026-07-01 (-5d) | 2026-07-17 → 2026-07-07 (-10d) | 10d → 5d |  | none → 48d |  |  |
| 22 | EXECUÇÃO DE CAIXARIA | 2026-07-06 → 2026-07-01 (-5d) | 2026-07-14 → 2026-07-07 (-7d) | 7d → 5d |  | none → 15d |  |  |
| 23 | EXECUÇÃO DE CONCRETAGEM DAS FUNDAÇÕES | 2026-07-15 → 2026-07-08 (-7d) | 2026-07-17 → 2026-07-14 (-3d) | 3d → 5d |  | none → 15d |  |  |
| 24 | EXECUÇÃO DE CONCRETAGEM DAS CALÇADAS | 2026-07-20 → 2026-07-15 (-5d) | 2026-07-22 → 2026-07-21 (-1d) | 3d → 5d |  | none → 38d |  |  |
| 25 | IÇAMENTO DOS PILARES DE MADEIRA | 2026-07-20 → 2026-07-15 (-5d) | 2026-07-22 → 2026-07-17 (-5d) |  |  | none → 15d |  |  |
| 26 | FABRICAÇÃO DE AÇO PARA TELHADO |  | 2026-07-30 → 2026-07-16 (-14d) | 30d → 20d |  | none → 11d |  |  |
| 27 | EXECUÇÃO DE ESTRUTURA METÁLICA PARA TELHADO | 2026-07-31 → 2026-07-17 (-14d) | 2026-09-24 → 2026-08-13 (-42d) | 40d → 20d |  | none → 11d |  |  |
| 28 | **EXECUÇÃO DE ESTRUTURA EM LSF PARA BAIAS** | 2026-06-08 → 2026-07-01 (+23d) | 2026-06-08 → 2026-07-21 (+43d) | 1d → 15d |  | none → 13d |  |  |
| 29 | PAINELIZAÇÃO DE LSF | 2026-07-20 → 2026-07-01 (-19d) | 2026-07-29 → 2026-07-09 (-20d) | 8d → 7d |  | none → 13d | 23 → none | constraint none → start no earlier than 2026-07-01; resources none → Equipe Veks |
| 30 | VERTICALIZAÇÃO DE LSF | 2026-07-30 → 2026-07-10 (-20d) | 2026-08-10 → 2026-07-21 (-20d) |  |  | none → 13d |  | resources none → Equipe Veks |
| 32 | CHAPEAMENTO EXTERNO DAS BAIAS | 2026-08-11 → 2026-07-22 (-20d) | 2026-08-21 → 2026-08-11 (-10d) | 9d → 15d |  | none → 13d |  | resources none → Equipe Veks |
| 33 | CHAPEAMENTO INTERNO DA BAIAS | 2026-08-24 → 2026-06-08 (-77d) | 2026-09-03 → 2026-06-26 (-69d) | 9d → 15d |  | none → 40d | 32 → none | resources none → Equipe Veks |
| 34 | EXECUÇÃO DE BASECOAT | 2026-09-04 → 2026-06-29 (-67d) | 2026-09-24 → 2026-07-17 (-69d) |  |  | none → 40d |  |  |
| 35 | PINTURA COM STAIN DAS MADEIRAS PINUS | 2026-08-24 → 2026-08-12 (-12d) | 2026-09-04 → 2026-08-25 (-10d) |  |  | none → 13d |  |  |
| 36 | EXECUÇÃO DE PEDRA MOLEDO | 2026-07-31 → 2026-07-20 (-11d) | 2026-08-27 → 2026-08-14 (-13d) |  |  | none → 15d | 26 → 25 |  |
| 37 | APLICAÇÃO DE RESINA SOBRE PEDRA MODELO | 2026-08-28 → 2026-08-17 (-11d) | 2026-09-03 → 2026-08-21 (-13d) |  |  | none → 15d |  |  |
| 39 | EXECUÇÃO DE 1 PONTO DE ILUMINAÇÃO POR BAIA | 2026-09-25 → 2026-08-14 (-42d) | 2026-10-01 → 2026-08-20 (-42d) |  |  | none → 11d |  |  |
| 40 | EXECUÇÃO DE 1 PONTO DE ELÉTRICA EM CADA PILAR | 2026-10-02 → 2026-08-21 (-42d) | 2026-10-08 → 2026-08-27 (-42d) |  |  | none → 11d |  |  |
| 41 | EXECUÇÃO DE PORTÃO DAS BAIAS | 2026-06-25 → 2026-06-22 (-3d) | 2026-08-19 → 2026-08-14 (-5d) |  |  | none → 20d |  |  |
| 42 | EXECUÇÃO DE TELHADO SINGLE | 2026-09-25 → 2026-07-27 (-60d) | 2026-11-05 → 2026-09-04 (-62d) |  |  | none → 5d | 27 → 41 | constraint none → start no earlier than 2026-07-27 |
| 43 | PINTURA DE ESTRUTURA DO TELHADO | 2026-11-06 → 2026-08-24 (-74d) | 2026-11-26 → 2026-09-11 (-76d) |  |  | none → 0d |  | constraint none → start no earlier than 2026-08-24 |
